# 中信和华夏上海同城自贸区接入项目进度计划2

Schedule from MS Project, 2015-12-30 to 2016-05-23, A marks actual dates.

## Calendars

- Standard: Mon-Fri 08:00-12:00, 13:00-17:00; Sat-Sun off.
- 标准: Mon-Fri 08:00-12:00, 13:00-17:00; Sat-Sun off.

## Schedule

| ID | WBS | Task | Type | Duration | Start | Finish | Predecessors | Complete | Remaining | Total slack | Deadline | Calendar |
| --- | --- | --- | --- | --- | --- | --- | --- | --- | --- | --- | --- | --- |
| 1 | 1 | **华夏银行上海同城自贸区接入** |  | 3d? | 2015-12-30 A | 2016-01-01 |  | 18% | 2.46d? |  | 2016-05-20 | 标准 |
| 2 | 1.1 | 项目组成员入场 | milestone | 0d | 2015-12-30 A | 2015-12-30 A |  | 100% |  |  | 2015-12-30 |  |
| 3 | 1.2 | **系统构建** |  | 24d | 2015-12-30 A | 2016-02-01 | 2 | 67% | 7.86d | 0d |  |  |
| 4 | 1.2.1 | **自贸区业务报文开发工作** |  | 8d | 2015-12-30 A | 2016-01-08 A |  | 100% |  |  |  |  |
| 5 | 1.2.1.1 | 自贸区贷记业务报文（SMP011） |  | 1d | 2015-12-30 A | 2015-12-30 A |  | 100% |  |  |  |  |
| 6 | 1.2.1.2 | 自贸区贷记转汇业务报文（SMP017） |  | 0.5d | 2015-12-31 A | 2015-12-31 A | 5 | 100% |  |  |  |  |
| 7 | 1.2.1.3 | 自贸区贷记退汇报文（SMP013） |  | 0.5d | 2015-12-31 A | 2015-12-31 A | 6 | 100% |  |  |  |  |
| 8 | 1.2.1.4 | 自贸区借记业务报文（SMP012） |  | 1d | 2016-01-01 A | 2016-01-01 A | 7 | 100% |  |  |  |  |
| 9 | 1.2.1.5 | 自贸区借记冲正业务报文（SMP016） |  | 0.5d | 2016-01-04 A | 2016-01-04 A | 8 | 100% |  |  |  |  |
| 10 | 1.2.1.6 | 跨境贷记业务报文（SMP031） |  | 1d | 2016-01-04 A | 2016-01-05 A | 9 | 100% |  |  |  |  |
| 11 | 1.2.1.7 | 跨境贷记转汇业务报文（SMP037） |  | 0.5d | 2016-01-05 A | 2016-01-05 A | 10 | 100% |  |  |  |  |
| 12 | 1.2.1.8 | 跨境贷记退汇报文（SMP033） |  | 0.5d | 2016-01-06 A | 2016-01-06 A | 7, 11 | 100% |  |  |  |  |
| 13 | 1.2.1.9 | 通用业务回执报文（SMP099） |  | 0.5d | 2016-01-06 A | 2016-01-06 A | 12 | 100% |  |  |  |  |
| 14 | 1.2.1.10 | 自贸区账户信息变更报文（SMP215） |  | 0.5d | 2016-01-07 A | 2016-01-07 A | 13 | 100% |  |  |  |  |
| 15 | 1.2.1.11 | 自贸区账户信息变更返回报文（SMP315） |  | 0.5d | 2016-01-07 A | 2016-01-07 A | 14 | 100% |  |  |  |  |
| 16 | 1.2.1.12 | 资金流向下发报文（SMP542*） |  | 0.5d | 2016-01-08 A | 2016-01-08 A | 15 | 100% |  |  |  |  |
| 17 | 1.2.1.13 | 资金流向下发申请报文（SMP541*） |  | 0.5d | 2016-01-08 A | 2016-01-08 A | 16 | 100% |  |  |  |  |
| 18 | 1.2.2 | 自贸区业务报文单元测试 |  | 1d | 2016-01-11 A | 2016-01-11 A | 4 | 100% |  |  |  |  |
| 19 | 1.2.3 | **自贸区资金池业务报文开发工作** |  | 4d | 2016-01-12 A | 2016-01-15 A | 18 | 100% |  |  |  |  |
| 20 | 1.2.3.1 | 自贸区资金划拨业务报文（SMP841） |  | 1d | 2016-01-12 A | 2016-01-12 A | 18 | 100% |  |  |  |  |
| 21 | 1.2.3.2 | 自贸区资金划拨退汇业务报文（SMP844*） |  | 1d | 2016-01-13 A | 2016-01-13 A | 20 | 100% |  |  |  |  |
| 22 | 1.2.3.3 | 自贸区资金归集业务报文（SMP842） |  | 1d | 2016-01-14 A | 2016-01-14 A | 21 | 100% |  |  |  |  |
| 23 | 1.2.3.4 | 自贸区资金划拨转汇业务报文（SMP843） |  | 1d | 2016-01-15 A | 2016-01-15 A | 22 | 100% |  |  |  |  |
| 24 | 1.2.4 | 自贸区资金池业务报文单元测试 |  | 1d | 2016-01-18 A | 2016-01-18 A | 19 | 100% |  |  |  |  |

Notes:
- 1: 华夏银行自贸区接入项目，通道式的开发任务。

| ID | WBS | Task | Type | Duration | Start | Finish | Predecessors | Complete | Remaining | Total slack | Free slack |
| --- | --- | --- | --- | --- | --- | --- | --- | --- | --- | --- | --- |
| 25 | 1.2.5 | **单位/个人资金归集业务报文开发工作** |  | 4d | 2016-01-12 A | 2016-01-15 A | 18 | 100% |  |  |  |
| 26 | 1.2.5.1 | 自贸区贷记 |  | 1d | 2016-01-12 A | 2016-01-12 A | 18 | 100% |  |  |  |
| 27 | 1.2.5.2 | 跨境贷记 |  | 1d | 2016-01-13 A | 2016-01-13 A | 26 | 100% |  |  |  |
| 28 | 1.2.5.3 | 自贸区借记 |  | 1d | 2016-01-14 A | 2016-01-14 A | 27 | 100% |  |  |  |
| 29 | 1.2.5.4 | 自贸区借贷记对账 |  | 1d | 2016-01-15 A | 2016-01-15 A | 28 | 100% |  |  |  |
| 30 | 1.2.6 | 单位/个人资金归集业务报文单元测试 |  | 1d | 2016-01-18 A | 2016-01-18 A | 25 | 100% |  |  |  |
| 31 | 1.2.7 | 特许参与者业务报文开发工作 |  | 7d | 2016-01-19 | 2016-01-27 | 30 |  |  | -101d | 0d |
| 32 | 1.2.8 | 特许参与者业务报文单元测试 |  | 1d | 2016-01-28 | 2016-01-28 | 31 |  |  | -101d | 0d |
| 33 | 1.2.9 | 集成测试 |  | 2d | 2016-01-29 A | 2016-02-01 | 32 | 25% | 1.5d | -101d | 0d |
| 34 | 1.2.10 | 构建里程碑 | milestone | 0d | 2016-02-01 | 2016-02-01 | 33 |  |  | -101d | 0d |
| 35 | 1.3 | 联调测试 |  | 32d | 2016-02-02 | 2016-03-16 | 3 |  |  | -101d | 0d |
| 36 | 1.4 | 系统上线 |  | 48d | 2016-03-17 | 2016-05-23 | 35 |  |  | -101d | 0d |
| 37 | 2 | **中信银行上海同城自贸区接入** |  | 4d | 2016-01-11 A | 2016-01-14 |  | 8% | 3.68d |  |  |
| 38 | 2.1 | 系统构建 |  | 15d | 2016-01-11 A | 2016-01-29 |  | 50% | 7.5d | -91d | 0d |
| 39 | 2.2 | 联调测试 |  | 32d | 2016-02-01 | 2016-03-15 | 38 |  |  | -91d | 0d |
| 40 | 2.3 | 系统上线 |  | 48d | 2016-03-16 | 2016-05-20 | 39 |  |  | -91d | 0d |
